# C:\Users\chogu\Downloads\qualicenter

Schedule from MS Project, 2024-04-24 to 2024-05-21, A marks actual dates.

## Calendars

- Standard: Mon-Fri 08:00-12:00, 13:00-17:00; Sat-Sun off. Exceptions (off unless hours are given): 2024-05-04 to 2024-05-05 08:00-12:00, 13:00-17:00, 2024-05-12 08:00-12:00, 13:00-17:00.

## Resources

| Resource |
| --- |
| Gustavo |
| Abigail |
| Aldehil |
| Ingrid |
| Noh Ah |
| Angel |
| Pablo |
| Eduardo |
| Iván |
| Gerardo |
| Dani |

## Schedule

| ID | WBS | Task | Type | Duration | Start | Finish | Predecessors | Complete | Remaining | Total slack | Free slack | Constraint | Resources | Work | Actual work | Text1 |
| --- | --- | --- | --- | --- | --- | --- | --- | --- | --- | --- | --- | --- | --- | --- | --- | --- |
| 1 | 1 | **Sprint 85%** |  | 23d | 2024-04-24 A | 2024-05-21 |  | 48% | 12.06d | 0d |  |  |  | 7522.4h | 3287.24h |  |
| 2 | 1.1 | **Cliente** |  | 17.6d | 2024-04-24 A | 2024-05-14 |  | 58% | 7.48d | 5.4d |  |  |  | 1020.8h | 540.96h |  |
| 3 | 1.1.1 | **El sistema debe ser capaz de registrar el tiempo acumulado de la llamada desde el momento en que el cliente marca al número de atención.** |  | 14.6d | 2024-04-29 A | 2024-05-14 |  | 52% | 7d | 5.4d |  |  | Gustavo | 272.8h | 137.78h | CR1 |
| 4 | 1.1.1.1 | **Recibir la llamada con Amazon Connect.** |  | 1d | 2024-04-29 A | 2024-04-29 A |  | 100% |  |  |  |  | Gustavo | 24h | 24h |  |
| 5 | 1.1.1.1.1 | Crear la instancia de Amazon Connect en una cuenta de AWS. |  | 1d | 2024-04-29 A | 2024-04-29 A |  | 100% |  |  |  | start no earlier than 2024-04-29 | Gustavo | 8h | 8h |  |
| 6 | 1.1.1.1.2 | Reclamar un número de teléfono y asignarlo a la instancia | milestone | 0d | 2024-04-29 A | 2024-04-29 A |  | 100% |  |  |  | start no earlier than 2024-04-29 | Gustavo |  |  |  |
| 7 | 1.1.1.1.3 | Configurar la instancia de Amazon Connect para recibir llamadas entrantes con un flujo predeterminado. |  | 1d | 2024-04-29 A | 2024-04-29 A | 6 | 100% |  |  |  |  | Gustavo | 8h | 8h |  |
| 8 | 1.1.1.2 | **Tener el control de la llamada.** |  | 2.1d | 2024-04-30 A | 2024-05-02 A |  | 100% |  |  |  |  | Gustavo | 32.8h | 32.8h |  |
| 9 | 1.1.1.2.1 | Crear las cuentas de agentes y administradores, con sus atributos respectivos como nombres y horarios. |  | 0.5d | 2024-04-30 A | 2024-04-30 A | 7 | 100% |  |  |  |  | Gustavo | 4h | 4h |  |
| 10 | 1.1.1.2.2 | Implementar funcionalidades de colas |  | 0.5d | 2024-04-30 A | 2024-04-30 A | 9 | 100% |  |  |  |  | Gustavo | 4h | 4h |  |
| 11 | 1.1.1.2.3 | Implementar ruteos y prioridades de colas. | milestone | 0d | 2024-04-30 A | 2024-04-30 A | 10 | 100% |  |  |  |  | Gustavo |  |  |  |
| 12 | 1.1.1.2.4 | Crear un flujo propio de control de llamadas |  | 1d | 2024-05-01 A | 2024-05-01 A | 11 | 100% |  |  |  |  | Gustavo | 8h | 8h |  |
| 13 | 1.1.1.2.5 | Asignar el flujo al número reclamado y asignado a la instancia |  | 0.1d | 2024-05-02 A | 2024-05-02 A | 12 | 100% |  |  |  |  | Gustavo | 0.8h | 0.8h |  |
| 14 | 1.1.1.3 | **Indicarle a Connect iniciar el registro del tiempo de la llamada.** |  | 7.5d | 2024-05-02 A | 2024-05-09 | 13 | 54% | 3.46d | 5.4d |  |  | Gustavo | 104h | 56h |  |
| 15 | 1.1.1.3.1 | Asignar permisos a Amazon Connect de acceso a Lambda mediante un perfil de IAM |  | 0.5d | 2024-05-02 A | 2024-05-02 A | 13 | 100% |  |  |  |  | Gustavo | 4h | 4h |  |
| 16 | 1.1.1.3.2 | Implementar un atributo de Amazon Connect de duración de llamada para las llamadas finalizadas, el cual utilizará la API de Amazon Connect Flow para en cualquier momento obtener la duración total de una llamada finalizada. |  | 3d | 2024-05-02 A | 2024-05-05 A | 15 | 100% |  |  |  |  | Gustavo | 24h | 24h |  |
| 17 | 1.1.1.3.3 | Adicionalmente para cada llamada capturar detalles importantes como el número del llamante, el tiempo y el asunto. Guardarlos como atributos en el flujo de llamada en la instancia de Amazon Connect. | milestone | 0d | 2024-05-06 A | 2024-05-06 | 16 | 5% | 0d | 5.4d | 0d |  | Gustavo |  |  |  |
| 18 | 1.1.1.3.4 | Iniciar un temporizador para cada llamada que se reciba, para así implementar una función Lambda en el flujo de llamadas, el cual podrá ser llamada en cualquier momento para obtener la duración en tiempo real de manera precisa para cada llamada. |  | 3d | 2024-05-06 | 2024-05-09 | 17 |  |  | 5.4d | 0d |  | Gustavo | 24h |  |  |
| 19 | 1.1.1.4 | **Recuperar el tiempo registrado por connect.** |  | 4d | 2024-05-09 | 2024-05-14 |  |  |  | 5.4d |  |  | Gustavo | 64h |  |  |
| 20 | 1.1.1.4.1 | Implementar en la interfaz de usuario la duración acumulada de la llamada para los agentes y administradores relevantes |  | 3d | 2024-05-09 | 2024-05-13 | 18 |  |  | 5.4d | 0d |  | Gustavo | 24h |  |  |
| 21 | 1.1.1.4.2 | Realizar pruebas exhaustivas invocando al API desde la interfaz, para garantizar el seguimiento correcto de la duración y la recuperación de datos de llamada. Validar contra diferentes escenarios como transferencias de llamada |  | 1d | 2024-05-13 | 2024-05-14 | 20 |  |  | 5.4d |  |  | Gustavo | 8h |  |  |
| 22 | 1.1.2 | **El sistema debe buscar un agente disponible para atender la llamada, si no hay uno entonces se deberá colocar la llamada en una cola de esperal. . El sistema debe identificar al cliente mediante su número de teléfono, si el cliente está registrado con una** |  | 14.5d | 2024-04-29 A | 2024-05-14 |  | 55% | 6.59d | 0d |  |  | Gustavo | 212h | 102.11h | CR2 |
| 23 | 1.1.2.1 | **Recuperar el número del cliente.** |  | 1d | 2024-04-29 A | 2024-04-29 A |  | 100% |  |  |  |  | Gustavo | 16h | 16h |  |
| 24 | 1.1.2.1.1 | Asignar un atributo en el flujo de Amazon Connect que guarde el número del cliente para cada llamada |  | 1d | 2024-04-29 A | 2024-04-29 A |  | 100% |  |  |  |  | Gustavo | 8h | 8h |  |

| ID | WBS | Task | Type | Duration | Start | Finish | Predecessors | Complete | Remaining | Total slack | Resources | Work | Actual work | Text1 |
| --- | --- | --- | --- | --- | --- | --- | --- | --- | --- | --- | --- | --- | --- | --- |
| 25 | 1.1.2.2 | **Comparar el número con los clientes para encontrar al cliente.** |  | 5d | 2024-05-03 A | 2024-05-07 | 13 | 57% | 2.17d | 0d | Gustavo | 64h | 23.2h |  |
| 26 | 1.1.2.2.1 | Montar y llenar una base de datos para relacionar números telefónicos de los clientes a datos individuales como nombre y número de póliza | manual | 2d | 2024-05-03 A | 2024-05-04 | 13 | 60% | 0.8d |  | Gustavo | 16h | 9.6h |  |
| 27 | 1.1.2.2.2 | Implementar una función Lambda en el flujo de la instancia de Amazon Connect, el cual comparará el número de un cliente guardado en un atributo con los números guardados en la base de datos. | manual | 1d | 2024-05-07 A | 2024-05-07 | 26 | 50% | 0.5d |  | Gustavo | 8h | 4h |  |
| 28 | 1.1.2.3 | **Recuperar la información de ese cliente.** |  | 1d | 2024-05-10 A | 2024-05-10 |  | 20% | 0.8d | 0d | Gustavo | 16h | 3.2h |  |
| 29 | 1.1.2.3.1 | Dentro de la función Lambda en el flujo de la instancia de Amazon Connect, después de hacer un match con los datos de un cliente y su número, regresará los datos del cliente de la base de datos para así guardarlos como atributo en la instancia. | manual | 1d | 2024-05-10 A | 2024-05-10 | 27 | 20% | 0.8d |  | Gustavo | 8h | 1.6h |  |
| 30 | 1.1.2.4 | **Si todos los agentes están ocupados, notificarle al cliente que está en la cola de espera.** |  | 0.5d | 2024-05-14 A | 2024-05-14 |  | 20% | 0.4d | 0d | Gustavo | 8h | 0.8h |  |
| 31 | 1.1.2.4.1 | Modificar las colas de espera de la instancia de Amazon Connect para que ocurran distintos escenarios si la cola está llena. | milestone, manual | 0d | 2024-05-14 A | 2024-05-14 | 29 | 20% | 0d |  | Gustavo |  |  |  |
| 32 | 1.1.2.4.2 | Si la cola está llena o no hay agentes disponibles, entonces reproducir un audio que indique que no hay un agente disponible reproducido en un loop. | milestone, manual | 0d | 2024-05-14 A | 2024-05-14 A | 31 | 100% |  |  | Gustavo |  |  |  |
| 33 | 1.1.2.4.3 | Si la cola no está llena y hay agentes disponibles, rutear la llamada al flujo propio de la instancia | manual | 0.5d | 2024-05-14 A | 2024-05-14 | 32 | 20% | 0.4d |  | Gustavo | 4h | 0.8h |  |
| 34 | 1.1.3 | **El sistema debe mostrar al agente los datos del cliente, incluyendo nombre, edad, datos de póliza y tiempo acumulado de llamada .l agente debe recibir una notificación de la llamada entrante junto con una cuenta regresiva antes de que pueda volver a reali** |  | 10.5d | 2024-05-03 A | 2024-05-14 | 13 | 9% | 9.57d | 0d | Gustavo | 152h | 9.07h | CR3 |
| 35 | 1.1.3.1 | **Desplegar toda la información del cliente.** |  | 4d | 2024-05-03 A | 2024-05-06 | 13 | 20% | 3.2d | 0d | Gustavo | 48h | 4.8h |  |
| 36 | 1.1.3.1.1 | Configurar el API de Amazon Connect y las funciones Lambda asignadas al flujo de llamada para recuperar datos del cliente | manual | 1d | 2024-05-03 A | 2024-05-03 | 13 | 20% | 0.8d |  | Gustavo | 8h | 1.6h |  |
| 37 | 1.1.3.1.2 | Implementar una interfaz de usuario en la aplicación del agente para mostrar los datos del cliente, incluyendo nombre, edad, datos de póliza y tiempo acumulado de llamada. | manual | 1d | 2024-05-06 A | 2024-05-06 | 36 | 20% | 0.8d |  | Gustavo | 8h | 1.6h |  |
| 38 | 1.1.3.2 | **Generar una alerta en la pantalla del agente sobre una llamada entrante** |  | 3.5d | 2024-05-09 | 2024-05-13 |  |  |  | 0d | Gustavo | 40h |  |  |
| 39 | 1.1.3.2.1 | Configurar el API de Amazon Connect para crear una interfaz “Agent Workspace” dentro de la aplicación | manual | 1d | 2024-05-09 | 2024-05-09 | 37 |  |  |  | Gustavo | 8h |  |  |
| 40 | 1.1.3.2.2 | Generar una alerta en la pantalla del agente sobre una llamada entrante, utilizando mensajes emergentes y sonidos audibles. | manual | 0.5d | 2024-05-13 | 2024-05-13 | 39 |  |  |  | Gustavo | 4h |  |  |
| 41 | 1.1.3.3 | **Establecer la conexión entre el agente y el cliente.** |  | 1d | 2024-05-13 A | 2024-05-14 |  |  | 1d | 0d | Gustavo | 16h |  |  |
| 42 | 1.1.3.3.1 | Implementar la funcionalidad de conexión entre el agente y el cliente, utilizando las funcionalidades del API de Amazon Connect y la interfaz “Agent Workspace”. | manual | 0.5d | 2024-05-13 | 2024-05-13 | 40 |  |  |  | Gustavo | 4h |  |  |
| 43 | 1.1.3.3.2 | Asignar a cada perfil de Agente en la instancia de Amazon Connect un tiempo “After-Call-Work” | milestone, manual | 0d | 2024-05-14 A | 2024-05-14 A | 42 | 100% |  |  | Gustavo |  |  |  |
| 44 | 1.1.3.3.3 | Mostrar el temporizador “After-Call-Work” en la aplicación después de desconectar cada llamada. | manual | 0.5d | 2024-05-14 | 2024-05-14 | 43 |  |  |  | Gustavo | 4h |  |  |
| 45 | 1.1.4 | **Se registra, por llamada, el analisis sentimental y la transcripción en tiempo real cuando la conexión entre el cliente y el agente comienza** |  | 17d | 2024-04-24 A | 2024-05-13 |  | 80% | 3.4d | 0d | Angel | 384h | 292h | CR4 |
| 46 | 1.1.4.1 | **Inicio una llamada entre agente y cliente** |  | 8d | 2024-04-24 A | 2024-05-03 |  | 99% | 0d | 0d | Angel | 120h | 104h |  |
| 47 | 1.1.4.1.1 | Configurar Amazon Connect par amanejar llamadas entrantes | manual | 5d | 2024-04-24 A | 2024-04-30 A |  | 100% |  |  | Angel | 40h | 40h |  |
| 48 | 1.1.4.1.2 | Hacer que el sistema pueda identificar usuarios y conectar las llamadas correctamente entre agente y cliente | manual | 1d | 2024-05-01 A | 2024-05-01 A | 47 | 100% |  |  | Angel | 8h | 8h |  |
| 49 | 1.1.4.1.3 | Integrar el API necesario para capturar el audio de la llamada en tiempo real | manual | 1d | 2024-05-03 A | 2024-05-03 A |  | 100% |  |  | Angel | 8h | 8h |  |

| ID | WBS | Task | Type | Duration | Start | Finish | Predecessors | Complete | Remaining | Total slack | Resources | Work | Actual work | Text1 |
| --- | --- | --- | --- | --- | --- | --- | --- | --- | --- | --- | --- | --- | --- | --- |
| 50 | 1.1.4.2 | **Se registra el análisis sentimental del cliente** |  | 5d | 2024-05-03 A | 2024-05-07 A |  | 100% |  |  | Angel | 64h | 64h |  |
| 51 | 1.1.4.2.1 | Aprender a obtener el analisis sentimental | manual | 1d | 2024-05-03 A | 2024-05-03 A |  | 100% |  |  | Angel | 8h | 8h |  |
| 52 | 1.1.4.2.2 | Desarrollar el backend para enviar texto transcrito (del audio) al servicio de análisis de sentimientos | manual | 1d | 2024-05-06 A | 2024-05-06 A | 51 | 100% |  |  | Angel | 8h | 8h |  |
| 53 | 1.1.4.2.3 | Configurar la integración para que cada segmento de texto transcrito se envíe al servicio de análisis tan pronto como esté disponible. | manual | 1d | 2024-05-07 A | 2024-05-07 A | 52 | 100% |  |  | Angel | 8h | 8h |  |
| 54 | 1.1.4.3 | **Se registra la transcripción en tiempo real** |  | 5d | 2024-05-08 A | 2024-05-13 |  | 30% | 3.5d | 0d | Angel | 72h | 21.6h |  |
| 55 | 1.1.4.3.1 | Verificar si se necesita usar Amazon Transcribe y aprenderlo, o si basta con Amazon Comprehend | manual | 1d | 2024-05-08 A | 2024-05-08 A |  | 100% |  |  | Angel | 8h | 8h |  |
| 56 | 1.1.4.3.2 | Configurar Amazon Connect para enviar un audio | manual | 1d | 2024-05-09 A | 2024-05-09 | 55 | 20% | 0.8d |  | Angel | 8h | 1.6h |  |
| 57 | 1.1.4.3.3 | Crear función para recibir y procesar el texto transcrito. | manual | 1d | 2024-05-10 | 2024-05-10 | 56 |  |  |  | Angel | 8h |  |  |
| 58 | 1.1.4.3.4 | Almacenar las transcripciones en una base de datos | manual | 1d | 2024-05-13 | 2024-05-13 | 57 |  |  |  | Angel | 8h |  |  |
| 59 | 1.2 | **Agente** |  | 18d | 2024-04-25 A | 2024-05-15 |  | 56% | 7.9d | 4d |  | 3505.6h | 1741.01h |  |
| 60 | 1.2.1 | **El agente visualiza un script del dialogo que va a tener con el cliente:** |  | 18d | 2024-04-25 A | 2024-05-15 |  | 40% | 10.8d | 4d | Eduardo | 384h | 166.07h | AR1 |
| 61 | 1.2.1.1 | **Tener un panel visible donde se colocara el script.** |  | 2d | 2024-04-25 A | 2024-04-26 A |  | 100% |  |  | Eduardo | 32h | 32h |  |
| 62 | 1.2.1.1.1 | Realizar el front-end del panel donde se colocara el script. |  | 2d | 2024-04-25 A | 2024-04-26 A |  | 100% |  |  | Eduardo | 16h | 16h |  |
| 63 | 1.2.1.2 | **Colocar un script dummy en el panel** |  | 2d | 2024-04-30 A | 2024-05-01 A |  | 100% |  |  | Eduardo | 32h | 32h |  |
| 64 | 1.2.1.2.1 | Crear un script con datos dummy directo en el front-end | manual | 2d | 2024-04-30 A | 2024-05-01 A | 62 | 100% |  |  | Eduardo | 16h | 16h |  |
| 65 | 1.2.1.3 | **Visualizar datos reales en el script.** |  | 8d | 2024-05-03 A | 2024-05-10 |  | 30% | 5.6d | 0d | Eduardo | 128h | 38.4h |  |
| 66 | 1.2.1.3.1 | Crear una conexión a la Base de Datos para traer por la API los datos del cliente y colocarlos en tiempo real en el script. | manual | 8d | 2024-05-03 A | 2024-05-10 | 64 | 30% | 5.6d |  | Eduardo | 64h | 19.2h |  |
| 67 | 1.2.1.4 | **Colocar los campos de registro** |  | 4d | 2024-05-12 A | 2024-05-15 |  |  | 4d | 4d | Eduardo | 48h | 16h |  |
| 68 | 1.2.1.4.1 | Crear y hacer funcionales los campos de registro de la información del cliente |  | 4d | 2024-05-12 | 2024-05-15 | 66 |  |  | 4d | Eduardo | 32h |  |  |
| 69 | 1.2.2 | **Para que el agente, durante la llamada, conozca la información del cliente, existe un apartado de información del cliente que será desplegado tal y como se especifica EN EL REQUERIMIENTO NUMERO 3 DE HERRAMIENTAS EXTERNAS** |  | 6d | 2024-04-29 A | 2024-05-04 A |  | 100% |  |  | Eduardo | 144h | 144h | AR2 |
| 70 | 1.2.2.1 | **Visualiza un apartado con datos dummy del cliente** |  | 3d | 2024-04-29 A | 2024-05-01 A |  | 100% |  |  | Eduardo | 48h | 48h |  |
| 71 | 1.2.2.1.1 | Los datos dummy del cliente se visualizan en el Frontend del panel | manual | 3d | 2024-04-29 A | 2024-05-01 A |  | 100% |  |  | Eduardo | 24h | 24h |  |
| 72 | 1.2.2.2 | **Visualiza un apartado con los datos reales del cliente en tiempo real** |  | 3d | 2024-05-02 A | 2024-05-04 A |  | 100% |  |  | Eduardo | 48h | 48h |  |
| 73 | 1.2.2.2.1 | Se crea una conexión a la base de datos y los datos del cliente se visualizan en tiempo real |  | 3d | 2024-05-02 A | 2024-05-04 A | 71 | 100% |  |  | Eduardo | 24h | 24h |  |

| ID | WBS | Task | Duration | Start | Finish | Predecessors | Complete | Remaining | Total slack | Free slack | Resources | Work | Actual work | Text1 |
| --- | --- | --- | --- | --- | --- | --- | --- | --- | --- | --- | --- | --- | --- | --- |
| 74 | 1.2.3 | **Para facilitar el envío de los diferentes servicios (grúa, ambulancia y ajustador), el agente tiene un espacio en su pantalla principal para ingresar la ubicación del cliente para que el envío de los servicios se hagan a esa dirección.** | 5d | 2024-04-29 A | 2024-05-03 A |  | 100% |  |  |  | Abigail | 120h | 120h | AR3 |
| 75 | 1.2.3.1 | **Espacio para escribir la dirección del cliente:** | 5d | 2024-04-29 A | 2024-05-03 A |  | 100% |  |  |  | Abigail | 80h | 80h |  |
| 76 | 1.2.3.1.1 | Crear archivo CSS | 0.5d | 2024-04-29 A | 2024-04-29 A |  | 100% |  |  |  | Abigail | 4h | 4h |  |
| 77 | 1.2.3.1.2 | Crear archivo JS | 0.5d | 2024-04-29 A | 2024-04-29 A | 76 | 100% |  |  |  | Abigail | 4h | 4h |  |
| 78 | 1.2.3.1.3 | Diseñar el componente en el espacio designado de la aplicación | 1d | 2024-04-30 A | 2024-04-30 A | 77 | 100% |  |  |  | Abigail | 8h | 8h |  |
| 79 | 1.2.3.1.4 | Programar la funcionalidad del FrontEnd | 3d | 2024-05-01 A | 2024-05-03 A | 78 | 100% |  |  |  | Abigail | 24h | 24h |  |
| 80 | 1.2.4 | **Con los datos del cliente y a partir de sus pólizas, se despliega un menú que muestra los vehículos registrados del cliente.** | 18d | 2024-04-25 A | 2024-05-15 |  | 44% | 10.12d | 4d |  | Eduardo | 368h | 96h | AR4 |
| 81 | 1.2.4.1 | **Visualiza un apartado con datos dummy del cliente** | 4d | 2024-04-25 A | 2024-04-30 A |  | 100% |  |  |  | Eduardo | 64h | 64h |  |
| 82 | 1.2.4.1.1 | Los datos dummy del cliente se visualizan en el Frontend del panel | 4d | 2024-04-25 A | 2024-04-30 A |  | 100% |  |  |  | Eduardo | 32h | 32h |  |
| 83 | 1.2.4.2 | **Visualiza un apartado con los datos reales del cliente en tiempo rea** | 12d | 2024-05-03 A | 2024-05-15 |  | 25% | 9d | 4d |  | Eduardo | 192h | 24h |  |
| 84 | 1.2.4.2.1 | Se crea una conexión a la base de datos. | 6d | 2024-05-03 A | 2024-05-08 |  | 50% | 3d | 4d | 0d | Eduardo | 48h | 24h |  |
| 85 | 1.2.4.2.2 | Dependiendo de la póliza del cliente con un condicional despliega información sobre sus autos | 6d | 2024-05-09 | 2024-05-15 | 84 |  |  | 4d |  | Eduardo | 48h |  |  |
| 86 | 1.2.5 | **En caso de necesitar proveer una ayuda rápida al cliente, el agente tiene una sección en su pantalla principal con 2 botones, uno para mandar ambulancia y otro para enviar grúa.** | 1d | 2024-05-04 A | 2024-05-04 A | 79 | 100% |  |  |  | Abigail | 24h | 24h | AR5 |
| 87 | 1.2.5.1 | **Diseñar y posicionar los botones correctamente:** | 1d | 2024-05-04 A | 2024-05-04 A |  | 100% |  |  |  | Abigail | 16h | 16h |  |
| 88 | 1.2.5.1.1 | Crear archivo CSS | 0.5d | 2024-05-04 A | 2024-05-04 A |  | 100% |  |  |  | Abigail | 4h | 4h |  |
| 89 | 1.2.5.1.2 | Crear archivo JS | 0.3d | 2024-05-04 A | 2024-05-04 A | 88 | 100% |  |  |  | Abigail | 2.4h | 2.4h |  |
| 90 | 1.2.5.1.3 | Diseñar los componentes en el espacio designado de la aplicación | 0.2d | 2024-05-04 A | 2024-05-04 A | 89 | 100% |  |  |  | Abigail | 1.6h | 1.6h |  |
| 91 | 1.2.6 | **Durante su conversación con el cliente, el agente le pregunta al cliente si necesita el servicio de una grúa, si el cliente dice que sí, deberá oprimir el botón "Mandar Grúa", este botón mandará una alerta con la ubicación del cliente y el agente le dirá** | 9d | 2024-05-05 A | 2024-05-14 | 90 | 90% | 0.9d | 5d |  | Abigail | 216h | 194.4h | AR6 |
| 92 | 1.2.6.1 | **Recuperar el número del cliente:** | 2d | 2024-05-05 A | 2024-05-06 A |  | 100% |  |  |  | Abigail | 32h | 32h |  |
| 93 | 1.2.6.1.1 | API para recuperar el número del cliente | 1d | 2024-05-05 A | 2024-05-05 A |  | 100% |  |  |  | Abigail | 8h | 8h |  |
| 94 | 1.2.6.1.2 | Conexión de la funcionalidad del botón con el BackEnd | 1d | 2024-05-06 A | 2024-05-06 A | 93 | 100% |  |  |  | Abigail | 8h | 8h |  |
| 95 | 1.2.6.2 | **Recuperar la dirección del cliente** | 1d | 2024-05-07 A | 2024-05-07 A |  | 100% |  |  |  | Abigail | 16h | 16h |  |
| 96 | 1.2.6.2.1 | Funciónalidad que reciba la dirección desde el FrontEnd | 1d | 2024-05-07 A | 2024-05-07 A | 94 | 100% |  |  |  | Abigail | 8h | 8h |  |
| 97 | 1.2.6.3 | **Mandar un SMS con la alerta** | 6d | 2024-05-08 A | 2024-05-14 |  | 85% | 0.9d | 5d |  | Abigail | 96h | 81.6h |  |
| 98 | 1.2.6.3.1 | Configurar instancia Amazon SNS | 2d | 2024-05-08 A | 2024-05-09 A | 96 | 100% |  |  |  | Abigail | 16h | 16h |  |
| 99 | 1.2.6.3.2 | API para mandar el mensaje | 2d | 2024-05-10 A | 2024-05-12 A | 98 | 100% |  |  |  | Abigail | 16h | 16h |  |
| 100 | 1.2.6.3.3 | Función Lambda para mandar el mensaje | 2d | 2024-05-13 A | 2024-05-14 | 99 | 55% | 0.9d | 5d |  | Abigail | 16h | 8.8h |  |

| ID | WBS | Task | Duration | Start | Finish | Predecessors | Complete | Remaining | Total slack | Free slack | Resources | Work | Actual work | Text1 |
| --- | --- | --- | --- | --- | --- | --- | --- | --- | --- | --- | --- | --- | --- | --- |
| 101 | 1.2.7 | **Durante su conversación con el cliente, el agente le pregunta al cliente si necesita asistencia médica, si el cliente dice que sí, deberá oprimir el botón "Mandar Ambulancia", este botón mandará una alerta con la ubicación del cliente y el agente le dirá** | 9d | 2024-05-05 | 2024-05-14 | 90 |  |  | 5d |  | Abigail | 216h |  | AR7 |
| 102 | 1.2.7.1 | **Recuperar el número del cliente:** | 2d | 2024-05-05 | 2024-05-06 |  |  |  | 5d |  | Abigail | 32h |  |  |
| 103 | 1.2.7.1.1 | API para recuperar el número del cliente | 1d | 2024-05-05 | 2024-05-05 |  |  |  | 5d | 0d | Abigail | 8h |  |  |
| 104 | 1.2.7.1.2 | Conexión de la funcionalidad del botón con el BackEnd | 1d | 2024-05-06 | 2024-05-06 | 103 |  |  | 5d | 0d | Abigail | 8h |  |  |
| 105 | 1.2.7.2 | **Recuperar la dirección del cliente** | 1d | 2024-05-07 | 2024-05-07 |  |  |  | 5d |  | Abigail | 16h |  |  |
| 106 | 1.2.7.2.1 | Funciónalidad que reciba la dirección desde el FrontEnd | 1d | 2024-05-07 | 2024-05-07 | 104 |  |  | 5d | 0d | Abigail | 8h |  |  |
| 107 | 1.2.7.3 | **Mandar un SMS con la alerta** | 6d | 2024-05-08 | 2024-05-14 |  |  |  | 5d |  | Abigail | 96h |  |  |
| 108 | 1.2.7.3.1 | Configurar instancia Amazon SNS | 2d | 2024-05-08 | 2024-05-09 | 106 |  |  | 5d | 0d | Abigail | 16h |  |  |
| 109 | 1.2.7.3.2 | API para mandar el mensaje | 2d | 2024-05-10 | 2024-05-12 | 108 |  |  | 5d | 0d | Abigail | 16h |  |  |
| 110 | 1.2.7.3.3 | Función Lambda para mandar el mensaje | 2d | 2024-05-13 | 2024-05-14 | 109 |  |  | 5d |  | Abigail | 16h |  |  |
| 111 | 1.2.8 | **Cuando se selecciona la opción de enviar ayuda (requerimiento 5, 6), automáticamente se manda un mensaje de texto al número del cliente en llamada con la alerta de ayuda en camino.** | 2d | 2024-05-04 A | 2024-05-05 |  | 83% | 0.33d | 13d |  | Pablo | 96h | 81.33h | AR8 |
| 112 | 1.2.8.1 | **Ser capaz de generar una liga de un servicio de mapas (Como google maps) que contenga una dirección.** | 1d | 2024-05-04 A | 2024-05-04 |  | 50% | 0.5d | 14d |  | Pablo | 24h | 12h |  |
| 113 | 1.2.8.1.1 | Investigar al respecto, ya sea una API u otra forma de saberlo. | 1d | 2024-05-04 A | 2024-05-04 A | 74 | 100% |  |  |  | Pablo | 8h | 8h |  |
| 114 | 1.2.8.1.2 | Generar enlaces a partir de un script que reciba como input una dirección y retorne un enlace. | 1d | 2024-05-04 | 2024-05-04 | 74 |  |  | 14d |  | Pablo | 8h |  |  |
| 115 | 1.2.8.2 | **Ser capaz de enviar mensajes de texto a través de un script de JS.** | 2d | 2024-05-04 A | 2024-05-05 A |  | 100% |  |  |  | Pablo | 40h | 40h |  |
| 116 | 1.2.8.2.1 | Investigar sobre alguna librería o API que me permita enviar mensajes a un número dado. | 1d | 2024-05-04 A | 2024-05-04 A | 74 | 100% |  |  |  | Pablo | 8h | 8h |  |
| 117 | 1.2.8.2.2 | Escribir un código capaz de enviar mensajes a un número dado. | 1d | 2024-05-05 A | 2024-05-05 A | 116 | 100% |  |  |  | Pablo | 8h | 8h |  |
| 118 | 1.2.8.2.3 | Incluir un mensaje predeterminado e incluir el enlace alcanzado con el milestone | 1d | 2024-05-05 A | 2024-05-05 A | 116 | 100% |  |  |  | Pablo | 8h | 8h |  |
| 119 | 1.2.8.3 | **Enviar automáticamente mensajes al ingresar la dirección desde la página durante la llamada.** | 1d | 2024-05-04 A | 2024-05-04 A |  | 100% |  |  |  | Pablo | 16h | 16h |  |
| 120 | 1.2.8.3.1 | A partir de la finalización del requerimiento 3 con el ingreso de la dirección en la página final, enlazar el script de mensaje de la milestone 2 con la funcionalidad de un botón de submit. | 1d | 2024-05-04 A | 2024-05-04 A | 74 | 100% |  |  |  | Pablo | 8h | 8h |  |
| 121 | 1.2.9 | **En la sección izquierda, de la pantalla del agente, se muestra una transcripción en tiempo real de la llamada en curso** | 10d | 2024-04-30 A | 2024-05-09 |  | 36% | 6.41d |  |  | Angel | 392h | 84.8h | AR9 |
| 122 | 1.2.9.1 | **Se recupera la transcripción registrada de la llamada** | 8d | 2024-04-30 A | 2024-05-07 |  | 26% | 5.91d |  |  | Angel | 168h | 27.2h |  |
| 123 | 1.2.9.1.1 | Recuperar la transcripción de la llamada | 1d | 2024-04-30 A | 2024-04-30 A |  | 100% |  |  |  | Angel | 8h | 8h |  |
| 124 | 1.2.9.1.2 | Desarrollar un sistema de bufferización para almacenar temporalmente las transcripciones mientras son procesadas y antes de ser mostradas. | 6d | 2024-05-01 A | 2024-05-06 | 123 | 20% | 4.8d | 0.1d | 0d | Angel | 48h | 9.6h |  |
| 125 | 1.2.9.1.3 | Crear API endpoints para recuperar las transcripciones desde el almacenamiento temporal o buffer y enviarlas al frontend de la aplicación del agente. | 6d | 2024-05-01 A | 2024-05-06 | 123 | 20% | 4.8d | 12d |  | Angel | 48h | 9.6h |  |

| ID | WBS | Task | Type | Duration | Start | Finish | Predecessors | Complete | Remaining | Total slack | Free slack | Resources | Work | Actual work | Text1 |
| --- | --- | --- | --- | --- | --- | --- | --- | --- | --- | --- | --- | --- | --- | --- | --- |
| 126 | 1.2.9.2 | **Se muestra la transcripción de la llamada** |  | 7d | 2024-04-30 A | 2024-05-06 |  | 36% | 4.5d | 12d |  | Angel | 112h | 40h |  |
| 127 | 1.2.9.2.1 | Diseñar la interfaz donde se mostrarán las transcripciones |  | 1d | 2024-04-30 A | 2024-04-30 A |  | 100% |  |  |  | Angel | 8h | 8h |  |
| 128 | 1.2.9.2.2 | Crear una aplicación en React para crear los componentes funcionales necesarios y para actualizaciones en tiempo real |  | 1d | 2024-05-01 A | 2024-05-01 A | 127 | 100% |  |  |  | Angel | 8h | 8h |  |
| 129 | 1.2.9.2.3 | La transcripción mostrada esté sincronizada con el audio de la llamada, actualizando la pantalla a medida que se disponga |  | 5d | 2024-05-02 A | 2024-05-06 | 128 | 10% | 4.5d | 12d |  | Angel | 40h | 4h |  |
| 130 | 1.2.9.3 | **Se anima la transcripción para que sea claramente legible** |  | 2d | 2024-05-03 A | 2024-05-04 |  | 99% | 0d |  |  | Angel | 32h | 16h |  |
| 131 | 1.2.9.3.1 | Crear y diseñar el archivo CSS o bibliotecas de JavaScript para animar el scroll del texto |  | 2d | 2024-05-03 A | 2024-05-04 A |  | 100% |  |  |  | Angel | 16h | 16h |  |
| 132 | 1.2.10 | **Al estar dentro de una llamada con el cliente, el agente puede ver los botones que le dan la opción de silenciar o colgar la llamada. Al silenciarla, el cliente no será posible de escuchar al agente hasta que este deshabilite esta opción. Al colgar la lla** |  | 4d | 2024-05-02 A | 2024-05-06 |  | 84% | 0.64d | 12.9d |  | Pablo | 104h | 86.08h | AR10 |
| 133 | 1.2.10.1 | **Visualizar la llamada al conectar Amazon Connect con la página.** |  | 3d | 2024-05-02 A | 2024-05-05 |  | 73% | 0.8d | 13.9d |  | Pablo | 48h | 35.2h |  |
| 134 | 1.2.10.1.1 | Una vez finalizado el funcionamiento y flujo de nuestra instancia de Connect, incluirla en nuestra página web en las pantallas correspondientes. |  | 1d | 2024-05-02 A | 2024-05-03 | 8 | 60% | 0.4d | 0.8d | 0d | Pablo | 8h | 4.8h |  |
| 135 | 1.2.10.1.2 | Verificar el funcionamiento deseado de la llamada al realizar pruebas. |  | 1d | 2024-05-03 A | 2024-05-04 | 134 | 80% | 0.2d | 0.8d | 0d | Pablo | 8h | 6.4h |  |
| 136 | 1.2.10.1.3 | Observar el comportamiento del flujo de la llamada establecido. |  | 1d | 2024-05-04 A | 2024-05-05 | 135 | 80% | 0.2d | 13.9d |  | Pablo | 8h | 6.4h |  |
| 137 | 1.2.10.2 | **Utilizar eficientemente los botones incluidos en Amazon Connect para finalizar y silenciar llamadas.** |  | 1d | 2024-05-05 A | 2024-05-06 A |  | 100% |  |  |  | Pablo | 24h | 24h |  |
| 138 | 1.2.10.2.1 | Al ver la llamada, se visualizan los botones de colgar y silenciar. |  | 1d | 2024-05-05 A | 2024-05-06 A | 136 | 100% |  |  |  | Pablo | 8h | 8h |  |
| 139 | 1.2.10.2.2 | los botones cumplen con su función. |  | 1d | 2024-05-05 A | 2024-05-06 A | 136 | 100% |  |  |  | Pablo | 8h | 8h |  |
| 140 | 1.2.11 | **Botón de solicitud de ayuda en la pantalla principal. Al dar tap sobre él se desplegará un cuadro de texto para ingresar la descripción del problema y un botón que enviará la solicitud de ayuda, y un mensaje de confirmación al dar tap sobre el botón.** |  | 10d | 2024-05-01 A | 2024-05-10 | 78 | 60% | 4d | 8d |  | Aldehil | 280h | 168h | AR11 |
| 141 | 1.2.11.1 | **Mostrar el botón de ayuda en la pantalla principal del agente** |  | 2d | 2024-05-01 A | 2024-05-02 A |  | 100% |  |  |  | Aldehil | 32h | 32h |  |
| 142 | 1.2.11.1.1 | Implementar la interfaz de usuario para incluir el botón de ayuda en la pantalla principal. |  | 1d | 2024-05-01 A | 2024-05-01 A |  | 100% |  |  |  | Aldehil | 8h | 8h |  |
| 143 | 1.2.11.1.2 | Verificar que el botón sea visible y esté correctamente ubicado. | milestone | 0d | 2024-05-01 A | 2024-05-01 A | 142 | 100% |  |  |  | Aldehil |  |  |  |
| 144 | 1.2.11.1.3 | Confirmar que el botón responda a eventos de tap o clic. | milestone | 0d | 2024-05-01 A | 2024-05-01 A | 143 | 100% |  |  |  | Aldehil |  |  |  |
| 145 | 1.2.11.1.4 | Agregar un controlador de eventos al botón de ayuda. |  | 1d | 2024-05-02 A | 2024-05-02 A | 144 | 100% |  |  |  | Aldehil | 8h | 8h |  |
| 146 | 1.2.11.1.5 | Cuando el usuario toque el botón, enviar un mensaje a la consola para indicar que se ha activado el botón de ayuda. | milestone | 0d | 2024-05-02 A | 2024-05-02 A | 145 | 100% |  |  |  | Aldehil |  |  |  |
| 147 | 1.2.11.2 | **Desplegar una ventana emergente al darle tap al botón:** |  | 2d | 2024-05-03 A | 2024-05-04 A |  | 100% |  |  |  | Aldehil | 40h | 40h |  |
| 148 | 1.2.11.2.1 | Crear una ventana emergente que se muestre al tocar el botón de ayuda. |  | 1d | 2024-05-03 A | 2024-05-03 A | 146 | 100% |  |  |  | Aldehil | 8h | 8h |  |
| 149 | 1.2.11.2.2 | Diseñar la interfaz de la ventana emergente para incluir un cuadro de texto y un botón de enviar. |  | 2d | 2024-05-03 A | 2024-05-04 A | 146 | 100% |  |  |  | Aldehil | 16h | 16h |  |

| ID | WBS | Task | Duration | Start | Finish | Predecessors | Complete | Remaining | Total slack | Free slack | Constraint | Resources | Work | Actual work | Text1 |
| --- | --- | --- | --- | --- | --- | --- | --- | --- | --- | --- | --- | --- | --- | --- | --- |
| 150 | 1.2.11.3 | **Guardar un mensaje escrito por el usuario en el cuadro de texto:** | 2d | 2024-05-05 A | 2024-05-06 A |  | 100% |  |  |  |  | Aldehil | 48h | 48h |  |
| 151 | 1.2.11.3.1 | Implementar la lógica para capturar el texto ingresado por el usuario en el cuadro detexto. | 1d | 2024-05-05 A | 2024-05-05 A | 149 | 100% |  |  |  |  | Aldehil | 8h | 8h |  |
| 152 | 1.2.11.3.2 | Verificar que el texto se almacene correctamente en una variable o estructura de datos. | 1d | 2024-05-05 A | 2024-05-05 A | 149 | 100% |  |  |  |  | Aldehil | 8h | 8h |  |
| 153 | 1.2.11.3.3 | Agregar un controlador de eventos al botón de enviar en la ventana emergente. | 1d | 2024-05-06 A | 2024-05-06 A | 152 | 100% |  |  |  |  | Aldehil | 8h | 8h |  |
| 154 | 1.2.11.3.4 | Al tocar el botón de enviar, enviar el mensaje almacenado en la consola. | 1d | 2024-05-06 A | 2024-05-06 A | 152 | 100% |  |  |  |  | Aldehil | 8h | 8h |  |
| 155 | 1.2.11.4 | **Registrar el mensaje guardado en la base de datos:** | 3d | 2024-05-07 | 2024-05-09 |  |  |  | 8d |  |  | Aldehil | 56h |  |  |
| 156 | 1.2.11.4.1 | Configurar el controlador en el API para insertar el mensaje en la BD. | 2d | 2024-05-07 | 2024-05-08 | 154 |  |  | 8d | 0d |  | Aldehil | 16h |  |  |
| 157 | 1.2.11.4.2 | Configurar la conexión al endpoint, en la aplicación | 1d | 2024-05-09 | 2024-05-09 | 156 |  |  | 9d |  |  | Aldehil | 8h |  |  |
| 158 | 1.2.11.4.3 | Escribir la lógica para insertar el mensaje en la base de datos haciendo uso del endpoint. | 1d | 2024-05-09 | 2024-05-09 | 156 |  |  | 8d | 0d |  | Aldehil | 8h |  |  |
| 159 | 1.2.11.5 | **Desplegar un mensaje de confirmación al terminar este proceso:** | 1d | 2024-05-10 | 2024-05-10 |  |  |  | 8d |  |  | Aldehil | 24h |  |  |
| 160 | 1.2.11.5.1 | Diseñar un mensaje de confirmación que se muestre al usuario después de guardar el mensaje en la base de datos. | 1d | 2024-05-10 | 2024-05-10 | 158 |  |  | 8d |  |  | Aldehil | 8h |  |  |
| 161 | 1.2.11.5.2 | Mostrar el mensaje de confirmación en la pantalla principal del agente una vez que se utilice el botón de enviar. | 1d | 2024-05-10 | 2024-05-10 | 158 |  |  | 8d |  |  | Aldehil | 8h |  |  |
| 162 | 1.2.12 | **Se muestra el analisis sentiimental y la duración acumulada por cada llamada en la aplicacion del agente al comenzar la llamada** | 10d | 2024-04-30 A | 2024-05-09 |  | 45% | 5.5d |  |  |  | Angel | 185.6h | 53.08h | AR12 |
| 163 | 1.2.12.1 | **Se recupera el análisis sentimental del cliente** | 4d | 2024-04-30 A | 2024-05-03 |  | 73% | 1.07d |  |  |  | Angel | 32h | 25.6h |  |
| 164 | 1.2.12.1.1 | Conigurar Amazon Connect para analizar el sentimiento | 2d | 2024-04-30 A | 2024-05-01 A |  | 100% |  |  |  |  | Angel | 16h | 16h |  |
| 165 | 1.2.12.1.2 | Crear endpoints de API que recojan los datos de análisis sentimental de las transcripciones y los pasen al frontend de la aplicación del agente. | 1d | 2024-05-02 A | 2024-05-02 | 164 | 20% | 0.8d | 16d |  |  | Angel | 8h | 1.6h |  |
| 166 | 1.2.12.2 | **Se visualiza el análisis sentimental en forma de barra de colores** | 7d | 2024-05-03 A | 2024-05-09 |  | 25% | 5.25d | 9d |  |  | Angel | 94.4h | 13.88h |  |
| 167 | 1.2.12.2.1 | Diseñar todos los componentes necesarios para mostrar una barra de colores | 0.5d | 2024-05-03 A | 2024-05-03 A | 165 | 100% |  |  |  |  | Angel | 4h | 4h |  |
| 168 | 1.2.12.2.2 | Hacer que el color cambie de acuerdo al análisis sentimental | 0.3d | 2024-05-03 A | 2024-05-03 A | 165 | 100% |  |  |  |  | Angel | 2.4h | 2.4h |  |
| 169 | 1.2.12.2.3 | Hacer que ela barra se actualice en tiempo real conforme cambian los datos de sentimiento que vienen del backend | 4d | 2024-05-06 A | 2024-05-09 | 168 | 10% | 3.6d | 9d |  | finish no earlier than 2024-05-09 | Angel | 32h | 3.2h |  |
| 170 | 1.2.12.3 | **Se anima la barra para la actualización de cambio de colores** | 0.2d | 2024-05-03 A | 2024-05-03 A |  | 100% |  |  |  |  | Angel | 3.2h | 3.2h |  |
| 171 | 1.2.12.3.1 | Utilizar CSS transitions para animar cambios en la barra de colores | 0.2d | 2024-05-03 A | 2024-05-03 A | 168 | 100% |  |  |  |  | Angel | 1.6h | 1.6h |  |
| 172 | 1.2.13 | **Ícono que cambia de color de acuerdo a los resultados del análisis sentimental del cliente. Se mantiene en verde si el cliente está feliz y tranquilo, amarillo si empieza a ponerse impaciente, y rojo si está enojado o frustrado.** | 6d | 2024-04-30 A | 2024-05-05 | 7 | 86% | 0.83d | 13d |  |  | Iván | 212h | 145.66h | AR13 |
| 173 | 1.2.13.1 | **El ícono se muestra con sus 3 colores (verde, amarillo, rojo).** | 1d | 2024-04-30 A | 2024-04-30 A |  | 100% |  |  |  |  | Iván | 40h | 40h |  |
| 174 | 1.2.13.1.1 | Se crea el componente para el ícono. | 1d | 2024-04-30 A | 2024-04-30 A | 7 | 100% |  |  |  |  | Iván | 8h | 8h |  |
| 175 | 1.2.13.1.2 | Se posiciona el componente dentro de la página. | 1d | 2024-04-30 A | 2024-04-30 A | 7 | 100% |  |  |  |  | Iván | 8h | 8h |  |
| 176 | 1.2.13.1.3 | El componente se puede mostrar en 3 colores (verde, rojo, amarillo). | 1d | 2024-04-30 A | 2024-04-30 A | 7 | 100% |  |  |  |  | Iván | 8h | 8h |  |
| 177 | 1.2.13.1.4 | El componente no presenta ningún fallo. | 1d | 2024-04-30 A | 2024-04-30 A | 7 | 100% |  |  |  |  | Iván | 8h | 8h |  |

| ID | WBS | Task | Duration | Start | Finish | Predecessors | Complete | Remaining | Total slack | Free slack | Constraint | Resources | Work | Actual work | Text1 |
| --- | --- | --- | --- | --- | --- | --- | --- | --- | --- | --- | --- | --- | --- | --- | --- |
| 178 | 1.2.13.2 | **El componente se ha vinculado con éxito a consultas en la base de datos y puede comunicarse con ella.** | 2d | 2024-05-01 A | 2024-05-02 A |  | 100% |  |  |  |  | Iván | 44h | 44h |  |
| 179 | 1.2.13.2.1 | Se implementa función para hacer que el componente cambie de color. | 0.5d | 2024-05-01 A | 2024-05-01 A | 177 | 100% |  |  |  |  | Iván | 4h | 4h |  |
| 180 | 1.2.13.2.2 | Se establecen parámetros dentro de la función según la información que se va a adquirir. | 1d | 2024-05-01 A | 2024-05-01 A | 177 | 100% |  |  |  |  | Iván | 8h | 8h |  |
| 181 | 1.2.13.2.3 | Se crea una rutina para recibir la información pertinente de la base de datos. | 1d | 2024-05-02 A | 2024-05-02 A | 180 | 100% |  |  |  |  | Iván | 8h | 8h |  |
| 182 | 1.2.13.2.4 | Se reciben los datos que necesita la función sin errores. | 1d | 2024-05-02 A | 2024-05-02 A | 180 | 100% |  |  |  |  | Iván | 8h | 8h |  |
| 183 | 1.2.13.3 | **El componente cumple con todas sus funcionalidades al usar datos pre-fabricados.** | 1d | 2024-05-03 A | 2024-05-03 A |  | 100% |  |  |  |  | Iván | 32h | 32h |  |
| 184 | 1.2.13.3.1 | Se generan datos pre-fabricados de prueba. 3.2 La función del componente recibe los datos. | 1d | 2024-05-03 A | 2024-05-03 A | 182 | 100% |  |  |  |  | Iván | 8h | 8h |  |
| 185 | 1.2.13.3.2 | La función del componente hace que el ícono cambie de color a partir de los datos. | 1d | 2024-05-03 A | 2024-05-03 A | 182 | 100% |  |  |  |  | Iván | 8h | 8h |  |
| 186 | 1.2.13.3.3 | No hay errores en el color mostrado. | 1d | 2024-05-03 A | 2024-05-03 A | 182 | 100% |  |  |  |  | Iván | 8h | 8h |  |
| 187 | 1.2.13.4 | **El componente cumple con todas sus funcionalidades en una llamada de prueba en tiempo real.** | 2d | 2024-05-04 A | 2024-05-05 |  | 50% | 1d | 13d |  |  | Iván | 48h | 24h |  |
| 188 | 1.2.13.4.1 | Se realizan llamadas en tiempo real. | 1d | 2024-05-04 A | 2024-05-04 A | 186 | 100% |  |  |  |  | Iván | 8h | 8h |  |
| 189 | 1.2.13.4.2 | El componente recibe información adecuadamente. | 1d | 2024-05-05 A | 2024-05-05 A | 188 | 100% |  |  |  |  | Iván | 8h | 8h |  |
| 190 | 1.2.13.4.3 | El componente cambia de color adecuadamente. | 1d | 2024-05-05 | 2024-05-05 | 188 |  |  | 13d |  |  | Iván | 8h |  |  |
| 191 | 1.2.13.4.4 | No hay errores en el color mostrado. | 1d | 2024-05-05 | 2024-05-05 | 188 |  |  | 13d |  |  | Iván | 8h |  |  |
| 192 | 1.2.14 | **Apartado de tiempo que muestra la duración de la llamada en tiempo real. Cambia de color de acuerdo a que tan cercano está al límite pre-establecido. Verde si está debajo del límite (2 minutos y medio o menos), amarillo si empieza a acercarse (2 minutos y** | 15d | 2024-04-30 A | 2024-05-15 |  | 51% | 7.33d | 4d |  |  | Iván | 764h | 377.6h | AR14 |
| 193 | 1.2.14.1 | **El componente se muestra con sus 3 colores (verde, amarillo, rojo).** | 2d | 2024-04-30 A | 2024-05-01 A |  | 100% |  |  |  |  | Iván | 48h | 48h |  |
| 194 | 1.2.14.1.1 | Se crea el componente para el contador de tiempo de la llamada. | 1d | 2024-04-30 A | 2024-04-30 A |  | 100% |  |  |  | start no earlier than 2024-04-30 | Iván | 8h | 8h |  |
| 195 | 1.2.14.1.2 | Se posiciona el componente dentro de la página. | 1d | 2024-05-01 A | 2024-05-01 A | 194 | 100% |  |  |  |  | Iván | 8h | 8h |  |
| 196 | 1.2.14.1.3 | El componente se puede mostrar en 3 colores (verde, rojo, amarillo). | 1d | 2024-05-01 A | 2024-05-01 A | 194 | 100% |  |  |  |  | Iván | 8h | 8h |  |
| 197 | 1.2.14.1.4 | El componente no presenta ningún fallo. | 1d | 2024-05-01 A | 2024-05-01 A | 194 | 100% |  |  |  |  | Iván | 8h | 8h |  |
| 198 | 1.2.14.2 | **El componente se ha vincluado con éxito a consultas en la base de datos y se comunica con ella.** | 4d | 2024-05-02 A | 2024-05-05 |  | 95% | 0.2d | 0.2d |  |  | Iván | 64h | 60.8h |  |
| 199 | 1.2.14.2.1 | Se implementa función para hacer que el componente cambie de color. | 1d | 2024-05-02 A | 2024-05-02 A | 197 | 100% |  |  |  |  | Iván | 8h | 8h |  |
| 200 | 1.2.14.2.2 | Se establecen parámetros dentro de la función según la información que se va a adquirir. | 1d | 2024-05-03 A | 2024-05-03 A | 199 | 100% |  |  |  |  | Iván | 8h | 8h |  |
| 201 | 1.2.14.2.3 | Se crea una rutina para recibir la información pertinente de la base de datos. | 1d | 2024-05-04 A | 2024-05-04 A | 200 | 100% |  |  |  |  | Iván | 8h | 8h |  |
| 202 | 1.2.14.2.4 | Se reciben los datos que necesita la función sin errores. | 1d | 2024-05-05 A | 2024-05-05 | 201 | 80% | 0.2d | 0.2d | 0d |  | Iván | 8h | 6.4h |  |

| ID | WBS | Task | Duration | Start | Finish | Predecessors | Complete | Remaining | Total slack | Free slack | Constraint | Resources | Work | Actual work | Text1 |
| --- | --- | --- | --- | --- | --- | --- | --- | --- | --- | --- | --- | --- | --- | --- | --- |
| 203 | 1.2.14.3 | **El componente despliega el tiempo de la llamada exitósamente.** | 4d | 2024-05-06 A | 2024-05-09 |  | 5% | 3.8d | 5d |  |  | Iván | 64h | 3.2h |  |
| 204 | 1.2.14.3.1 | Se realizan llamadas de prueba. | 1d | 2024-05-06 A | 2024-05-06 | 202 | 20% | 0.8d | 5d | 0d |  | Iván | 8h | 1.6h |  |
| 205 | 1.2.14.3.2 | La función del componente recibe los datos. | 1d | 2024-05-07 | 2024-05-07 | 204 |  |  | 5d | 0d |  | Iván | 8h |  |  |
| 206 | 1.2.14.3.3 | La función del componente hace que muestre el tiempo actual de la llamada. | 1d | 2024-05-08 | 2024-05-08 | 205 |  |  | 5d | 0d |  | Iván | 8h |  |  |
| 207 | 1.2.14.3.4 | No hay errores en el tiempo mostrado. | 1d | 2024-05-09 | 2024-05-09 | 206 |  |  | 5d | 1d |  | Iván | 8h |  |  |
| 208 | 1.2.14.4 | **El color del componente cambia de acuerdo al tiempo de la llamada y cuánto se ha acercado al límite en una llamada en tiempo real.** | 4d | 2024-05-12 | 2024-05-15 |  |  |  | 4d |  |  | Iván | 64h |  |  |
| 209 | 1.2.14.4.1 | Se realizan llamadas de prueba. | 1d | 2024-05-12 | 2024-05-12 | 207 |  |  | 4d | 0d | start no earlier than 2024-05-12 | Iván | 8h |  |  |
| 210 | 1.2.14.4.2 | El componente recibe información adecuadamente. | 1d | 2024-05-13 | 2024-05-13 | 209 |  |  | 4d | 0d |  | Iván | 8h |  |  |
| 211 | 1.2.14.4.3 | El componente cambia de color adecuadamente (verde si está debajo de 2 minutos y medio, amarillo di se está en 2 minutos y medio hasta 3, rojo si se ha pasado de 3). | 1d | 2024-05-14 | 2024-05-14 | 210 |  |  | 4d | 0d |  | Iván | 8h |  |  |
| 212 | 1.2.14.4.4 | No hay errores en el tiempo o color mostrado. | 1d | 2024-05-15 | 2024-05-15 | 211 |  |  | 4d |  |  | Iván | 8h |  |  |
| 213 | 1.2.14.5 | **El agente podrá acceder a un apartado en donde podrá verificar la evaluación y en caso de haberlos esccrito comentarios específicos de su supervisor** | 10d | 2024-04-30 A | 2024-05-09 |  | 56% | 4.4d | 9d |  |  | Gerardo | 200h | 100.27h | AR15 |
| 214 | 1.2.14.5.1 | **Diseñar un botón que describa correctamente la sección.** | 1d | 2024-04-30 A | 2024-04-30 A | 254 | 100% |  |  |  |  | Gerardo | 16h | 16h |  |
| 215 | 1.2.14.5.1.1 | Agregar dentro del la interfaz del agente un botón con la descripción del apartado. | 0.5d | 2024-04-30 A | 2024-04-30 A |  | 100% |  |  |  |  | Gerardo | 4h | 4h |  |
| 216 | 1.2.14.5.1.2 | El botón debe de seguir la fuente y los colores de la empresa. | 0.5d | 2024-04-30 A | 2024-04-30 A | 215 | 100% |  |  |  |  | Gerardo | 4h | 4h |  |
| 217 | 1.2.14.5.2 | **Recuperar los datos y comentarios de la evaluación del supervisor.** | 1d | 2024-05-01 A | 2024-05-01 A |  | 100% |  |  |  |  | Gerardo | 16h | 16h |  |
| 218 | 1.2.14.5.2.1 | Acceder a la base de datos para jalar los resultados de la encuesta del respectivo agente | 1d | 2024-05-01 A | 2024-05-01 A | 216 | 100% |  |  |  |  | Gerardo | 8h | 8h |  |
| 219 | 1.2.14.5.3 | **Mostrar los datos y comentarios del supervisor de una forma clara.** | 8d | 2024-05-02 A | 2024-05-09 |  | 27% | 5.87d | 9d |  |  | Gerardo | 88h | 23.47h |  |
| 220 | 1.2.14.5.3.1 | Desplegar los datos del agente específico. | 1d | 2024-05-02 A | 2024-05-02 | 218 | 80% | 0.2d | 14d | 0d |  | Gerardo | 8h | 6.4h |  |
| 221 | 1.2.14.5.3.2 | Mostrar los puntajes en un apartado de la pantalla | 1d | 2024-05-03 | 2024-05-03 | 220 |  |  | 14d | 5d |  | Gerardo | 8h |  |  |
| 222 | 1.2.14.5.3.3 | Mostrar los comentarios específicos a la par de los puntajes | 1d | 2024-05-09 | 2024-05-09 | 221 |  |  | 9d |  | finish no earlier than 2024-05-09 | Gerardo | 8h |  |  |
| 223 | 1.2.14.6 | **Los agentes podrán ver las respuestas a sus solicitudes de ayuda, enviadas por el supervisor, en un centro de notificaciones en la pantalla principal. Para poder aplicar las medidas sugeridas por el supervisor.** | 15d | 2024-04-30 A | 2024-05-15 |  | 50% | 7.5d | 4d |  |  | Dani | 204h | 104h | AR16 |
| 224 | 1.2.14.6.1 | **Creación de la pantalla para el centro de notificaciones.** | 0.5d | 2024-04-30 A | 2024-04-30 A |  | 100% |  |  |  |  | Dani | 12h | 12h |  |
| 225 | 1.2.14.6.1.1 | Diseñar la interfaz de usuario para el centro de notificaciones. | 0.5d | 2024-04-30 A | 2024-04-30 A |  | 100% |  |  |  |  | Dani | 4h | 4h |  |
| 226 | 1.2.14.6.1.2 | Desarrollar la funcionalidad básica de la pantalla de notificaciones. | 0.5d | 2024-04-30 A | 2024-04-30 A |  | 100% |  |  |  |  | Dani | 4h | 4h |  |

| ID | WBS | Task | Duration | Start | Finish | Predecessors | Complete | Remaining | Actual start | Total slack | Free slack | Constraint | Resources | Work | Actual work | Text1 |
| --- | --- | --- | --- | --- | --- | --- | --- | --- | --- | --- | --- | --- | --- | --- | --- | --- |
| 227 | 1.2.14.6.2 | **Conexión de la página web con el centro de notificaciones.** | 1d | 2024-05-12 | 2024-05-12 |  |  |  |  | 7d |  |  | Dani | 24h |  |  |
| 228 | 1.2.14.6.2.1 | Configurar la comunicación entre la página web y la pantalla de notificaciones. | 1d | 2024-05-12 | 2024-05-12 | 292 |  |  |  | 7d |  |  | Dani | 8h |  |  |
| 229 | 1.2.14.6.2.2 | Probar la integración para asegurar un funcionamiento correcto. | 1d | 2024-05-12 | 2024-05-12 | 292 |  |  |  | 7d |  |  | Dani | 8h |  |  |
| 230 | 1.2.14.6.3 | **Integración del texto de sugerencia o ayuda del supervisor en la pantalla de notificaciones.** | 2d | 2024-05-13 A | 2024-05-14 A |  | 100% |  |  |  |  |  | Dani | 32h | 32h |  |
| 231 | 1.2.14.6.3.1 | Establecer un canal de comunicación para recibir el texto del supervisor. | 1d | 2024-05-13 A | 2024-05-13 A | 229 | 100% |  |  |  |  |  | Dani | 8h | 8h |  |
| 232 | 1.2.14.6.3.2 | Desarrollar la lógica para dirigir el texto del supervisor a la pantalla de notificaciones. | 1d | 2024-05-14 A | 2024-05-14 A | 231 | 100% |  |  |  |  |  | Dani | 8h | 8h |  |
| 233 | 1.2.14.6.4 | **Implementación del cuadro de mensaje para mostrar el texto del supervisor.** | 1d | 2024-05-15 | 2024-05-15 |  |  |  |  | 4d |  |  | Dani | 16h |  |  |
| 234 | 1.2.14.6.4.1 | Diseñar la apariencia del cuadro de mensaje. | 0.5d | 2024-05-15 | 2024-05-15 | 232 |  |  |  | 4d | 0d |  | Dani | 4h |  |  |
| 235 | 1.2.14.6.4.2 | Programar la funcionalidad para mostrar el texto del supervisor en el cuadro de mensaje. | 0.5d | 2024-05-15 | 2024-05-15 | 234 |  |  |  | 4d |  |  | Dani | 4h |  |  |
| 236 | 1.3 | **Supervisor** | 22d | 2024-04-25 A | 2024-05-21 |  | 36% | 14.06d |  | 0d |  |  |  | 2996h | 1005.27h |  |
| 237 | 1.3.1 | **En la pantalla principal, se mostrará un listado de llamadas activas que serán escaladas, ordenadas por prioridad, donde se evaluara principalmente el estado emocional del cliente. Por ejemplo: Si el cliente se encuentra estresado, la llamada con el agent** | 8d | 2024-04-29 | 2024-05-06 |  | 45% | 4.4d | 2024-05-01 |  |  |  | Dani | 168h | 47.2h | SR1 |
| 238 | 1.3.1.1 | **Recuperar los datos del analisis sentimental y duración de la llamada de Amazon Connect** | 2d | 2024-05-01 A | 2024-05-02 |  | 50% | 1d |  | 0.6d |  |  | Dani | 32h | 16h |  |
| 239 | 1.3.1.1.1 | Investigar y seleccionar algoritmos adecuados para cada tarea. | 1d | 2024-05-01 A | 2024-05-01 A |  | 100% |  |  |  |  | start no earlier than 2024-05-01 | Dani | 8h | 8h |  |
| 240 | 1.3.1.1.2 | Implementar y probar los algoritmos para garantizar su precisión y eficacia. | 1d | 2024-05-02 | 2024-05-02 | 239 |  |  |  | 0.6d | 0d |  | Dani | 8h |  |  |
| 241 | 1.3.1.2 | **Desarrollo completo de los algoritmos para análisis sentimental del cliente, cálculo de duración acumulada de la llamada y detección de solicitud de asistencia del agente.** | 1d | 2024-05-03 A | 2024-05-03 |  | 30% | 0.7d |  | 15d |  |  | Dani | 24h | 7.2h |  |
| 242 | 1.3.1.2.1 | Recuperar información del estado de la solicitud de asistencia. | 1d | 2024-05-03 A | 2024-05-03 | 240 | 60% | 0.4d |  | 15d |  |  | Dani | 8h | 4.8h |  |
| 243 | 1.3.1.2.2 | Generar funciones de cálculo de duración de llamada, calculo del análisis sentimental del agente y detección solicitud de asistencia e iniciar pruebas de visualización. | 1d | 2024-05-03 | 2024-05-03 | 240 |  |  |  | 15d |  |  | Dani | 8h |  |  |
| 244 | 1.3.1.3 | **Diseño finalizado de la interfaz de usuario para visualizar las llamadas activas con prioridad.** | 1d | 2024-05-04 A | 2024-05-04 A |  | 100% |  |  |  |  |  | Dani | 24h | 24h |  |
| 245 | 1.3.1.3.1 | Diseñar la disposición y la apariencia de la interfaz de usuario. | 1d | 2024-05-04 A | 2024-05-04 A | 243 | 100% |  |  |  |  |  | Dani | 8h | 8h |  |
| 246 | 1.3.1.3.2 | Crear prototipos y realizar pruebas de usabilidad para asegurar una experiencia de usuario óptima. | 1d | 2024-05-04 A | 2024-05-04 A | 243 | 100% |  |  |  |  |  | Dani | 8h | 8h |  |
| 247 | 1.3.1.4 | **Implementación exitosa del algoritmo de resaltado de llamadas según su prioridad.** | 1d | 2024-05-05 | 2024-05-05 |  |  |  |  | 7d |  |  | Dani | 24h |  |  |
| 248 | 1.3.1.4.1 | Integrar el algoritmo de resaltado en la interfaz de usuario. | 1d | 2024-05-05 | 2024-05-05 | 246 |  |  |  | 13d |  |  | Dani | 8h |  |  |
| 249 | 1.3.1.4.2 | Probar el algoritmo con datos de prueba para verificar su funcionamiento correcto. | 1d | 2024-05-05 | 2024-05-05 | 246 |  |  |  | 7d | 0d |  | Dani | 8h |  |  |
| 250 | 1.3.2 | **En la sección designada para mostrar las llamadas activas, en la pantalla principal, por cada llamada activa se tendrá el nombre del agente, el nombre del cliente, el tiempo desde que comenzó la llamada y un análisis sentimental, el cuál a través de una f** | 12d | 2024-05-07 A | 2024-05-21 |  | 26% | 8.88d |  | 0d |  |  | Angel | 312h | 77.76h | SR2 |
| 251 | 1.3.2.1 | **Se recupera la información de una llamada** | 2d | 2024-05-07 A | 2024-05-08 |  | 10% | 1.8d |  | 10d |  |  | Angel | 48h | 4.8h |  |
| 252 | 1.3.2.1.1 | Configurar endpoints que recuperen los datos en tiempo real de las llamadas activas | 1d | 2024-05-07 A | 2024-05-07 | 124 | 10% | 0.9d |  | 0.1d | 0d |  | Angel | 8h | 0.8h |  |
| 253 | 1.3.2.1.2 | Obtener datos actualizados de las llamadas activas | 1d | 2024-05-08 A | 2024-05-08 | 252 | 10% | 0.9d |  | 10d |  |  | Angel | 8h | 0.8h |  |
| 254 | 1.3.2.1.3 | Utilizar Amazon Connect para actualizar los datos continuamente | 1d | 2024-05-08 A | 2024-05-08 | 252 | 10% | 0.9d |  | 10d | 0d |  | Angel | 8h | 0.8h |  |
| 255 | 1.3.2.1.4 | Verifica que la API recupere todos los datos | 1d | 2024-05-08 A | 2024-05-08 | 252 | 10% | 0.9d |  | 10d |  |  | Angel | 8h | 0.8h |  |

| ID | WBS | Task | Duration | Start | Finish | Predecessors | Complete | Remaining | Total slack | Free slack | Resources | Work | Actual work | Text1 |
| --- | --- | --- | --- | --- | --- | --- | --- | --- | --- | --- | --- | --- | --- | --- |
| 256 | 1.3.2.2 | **Se visualiza el nombre del agente, el nombre del cliente, el tiempo acumulado y análisis sentimental** | 1d | 2024-05-09 A | 2024-05-09 A |  | 100% |  |  |  | Angel | 24h | 24h |  |
| 257 | 1.3.2.2.1 | Crear una aplicacion React con los respectivos componentes | 1d | 2024-05-09 A | 2024-05-09 A | 255 | 100% |  |  |  | Angel | 8h | 8h |  |
| 258 | 1.3.2.2.2 | Permitir que la interfaz se actualice a medida que cambian los datos | 1d | 2024-05-09 A | 2024-05-09 A | 255 | 100% |  |  |  | Angel | 8h | 8h |  |
| 259 | 1.3.2.3 | **Hay un botón para unirse/escuchar la llamada** | 1d | 2024-05-10 A | 2024-05-10 |  | 20% | 0.8d | 7d |  | Angel | 16h | 3.2h |  |
| 260 | 1.3.2.3.1 | Desarrollar la funcionalidad, en conjunto con Amazon Connect, para que el botón "Monitorear" permita a los supervisores o agentes autorizados unirse a la llamada en curso de manera silenciosa. | 1d | 2024-05-10 A | 2024-05-10 | 258 | 20% | 0.8d | 7d | 0d | Angel | 8h | 1.6h |  |
| 261 | 1.3.2.4 | **Hay un botón que dice transcripción de la llamada** | 5d | 2024-05-12 A | 2024-05-16 |  | 26% | 3.7d | 0d |  | Angel | 80h | 20.8h |  |
| 262 | 1.3.2.4.1 | Crear y diseñar el componente en React | 1d | 2024-05-12 A | 2024-05-12 A | 260 | 100% |  |  |  | Angel | 8h | 8h |  |
| 263 | 1.3.2.4.2 | Asegúrate de que la transcripción sea precisa y que se muestre correctamente al presionar el botón. | 1d | 2024-05-13 A | 2024-05-13 | 262 | 30% | 0.7d | 0d |  | Angel | 8h | 2.4h |  |
| 264 | 1.3.2.4.3 | Obtener datos actualizados de la transcripción | 1d | 2024-05-14 | 2024-05-14 | 263 |  |  | 0d |  | Angel | 8h |  |  |
| 265 | 1.3.2.4.4 | Utilizar Amazon Connect para actualizar los datos continuamente | 1d | 2024-05-15 | 2024-05-15 | 264 |  |  | 0d |  | Angel | 8h |  |  |
| 266 | 1.3.2.4.5 | Verifica que la API recupere todos los datos | 1d | 2024-05-16 | 2024-05-16 | 265 |  |  | 0d |  | Angel | 8h |  |  |
| 267 | 1.3.2.5 | **Se visualizan todos los componentes anteriores para varias llamadas** | 3d | 2024-05-17 | 2024-05-21 |  |  |  | 0d |  | Angel | 48h |  |  |
| 268 | 1.3.2.5.1 | Generar, con Amazon Connect, varias llamadas | 1d | 2024-05-17 | 2024-05-17 | 266 |  |  | 0d |  | Angel | 8h |  |  |
| 269 | 1.3.2.5.2 | Desplegar las llamadas que el centro de contacto tenga en curso | 1d | 2024-05-20 | 2024-05-20 | 268 |  |  | 0d |  | Angel | 8h |  |  |
| 270 | 1.3.2.5.3 | Cargar los datos para múltiples llamadas simuláneas | 1d | 2024-05-21 | 2024-05-21 | 269 |  |  | 0d |  | Angel | 8h |  |  |
| 271 | 1.3.3 | **Por cada llamada activa, ícono que cambia de color si un agente pide ayuda, al presionarlo, se mostrara el problema escrito por el agente y los datos del cliente, un botón para responder directamente, así como un botón para acceder a la transcripción de l** | 6d | 2024-05-06 | 2024-05-12 |  |  |  | 7d |  | Aldehil | 152h |  | SR3 |
| 272 | 1.3.3.1 | **Cambiar los colores de un ícono a partir de datos dummies:** | 1d | 2024-05-06 | 2024-05-06 |  |  |  | 12d |  | Aldehil | 16h |  |  |
| 273 | 1.3.3.1.1 | Implementar la lógica para generar datos dummy que indiquen el estado de un agente | 1d | 2024-05-06 | 2024-05-06 | 249 |  |  | 12d |  | Aldehil | 8h |  |  |
| 274 | 1.3.3.1.2 | Utilizar estos datos para cambiar dinámicamente el color del ícono en la interfaz de | 1d | 2024-05-06 | 2024-05-06 | 249 |  |  | 12d |  |  |  |  |  |
| 275 | 1.3.3.2 | **Desplegar una ventana emergente al dar tap sobre el ícono de ayuda:** | 2d | 2024-05-06 | 2024-05-07 |  |  |  | 7d |  | Aldehil | 40h |  |  |
| 276 | 1.3.3.2.1 | Implementar un controlador de eventos para que el ícono de ayuda abra una ventana emergente al presionarlo. | 1d | 2024-05-06 | 2024-05-06 | 249 |  |  | 12d |  | Aldehil | 8h |  |  |
| 277 | 1.3.3.2.2 | Diseñar la interfaz de la ventana emergente para mostrar el mensaje recuperado del agente. | 2d | 2024-05-06 | 2024-05-07 | 249 |  |  | 7d | 0d | Aldehil | 16h |  |  |
| 278 | 1.3.3.3 | **Reutilizar los botones del requerimiento 2 y desplegarlos en la misma ventana emergente:** | 1d | 2024-05-12 | 2024-05-12 |  |  |  | 7d |  | Aldehil | 24h |  |  |
| 279 | 1.3.3.3.1 | Identificar y reutilizar el código y los elementos de interfaz de usuario del requerimiento 2 que correspondan a los botones necesarios. | 1d | 2024-05-12 | 2024-05-12 | 260 |  |  | 7d |  | Aldehil | 8h |  |  |
| 280 | 1.3.3.3.2 | Integrar estos botones en la ventana emergente creada en el milestone 4. | 1d | 2024-05-12 | 2024-05-12 | 260 |  |  | 7d |  | Aldehil | 8h |  |  |

| ID | WBS | Task | Duration | Start | Finish | Predecessors | Complete | Remaining | Total slack | Free slack | Constraint | Resources | Work | Actual work | Text1 |
| --- | --- | --- | --- | --- | --- | --- | --- | --- | --- | --- | --- | --- | --- | --- | --- |
| 281 | 1.3.3.4 | **Crear un botón de responder y desplegar una ventana emergente al darle tap:** | 1d | 2024-05-08 | 2024-05-08 |  |  |  | 7d |  |  | Aldehil | 24h |  |  |
| 282 | 1.3.3.4.1 | Agregar un botón de responder a la ventana emergente creada en el milestone 4. | 1d | 2024-05-08 | 2024-05-08 | 277 |  |  | 10d |  |  | Aldehil | 8h |  |  |
| 283 | 1.3.3.4.2 | Implementar un controlador de eventos para este botón que abra otra ventana emergente al presionarlo. | 1d | 2024-05-08 | 2024-05-08 | 277 |  |  | 7d | 0d |  | Aldehil | 8h |  |  |
| 284 | 1.3.4 | **Al dar tap sobre el botón de responder del requerimiento 3, se desplegará una ventana con un cuadro de texto para escribir la respuesta, y un botón para enviarla. Y un mensaje de confirmación al finalizar.** | 2d | 2024-05-09 | 2024-05-10 |  |  |  | 7d |  |  | Aldehil | 128h |  | SR4 |
| 285 | 1.3.4.1 | **Poder recuperar un mensaje escrito por el supervisor a través del cuadro de texto, una vez que se le de a enviar:** | 2d | 2024-05-09 | 2024-05-10 |  |  |  | 8d |  |  | Aldehil | 40h |  |  |
| 286 | 1.3.4.1.1 | Implementar la interfaz de usuario para incluir un cuadro de texto y un botón de enviar en la ventana emergente creada en el requerimiento 3 del supervisor. | 1d | 2024-05-10 | 2024-05-10 | 283 |  |  | 8d |  | finish no earlier than 2024-05-10 | Aldehil | 8h |  |  |
| 287 | 1.3.4.1.2 | Configurar un controlador de eventos para el botón de enviar. | 1d | 2024-05-09 | 2024-05-09 | 283 |  |  | 9d |  |  | Aldehil | 8h |  |  |
| 288 | 1.3.4.1.3 | Capturar el texto ingresado por el supervisor en el cuadro de texto al presionar el botón de enviar. | 1d | 2024-05-09 | 2024-05-09 | 283 |  |  | 9d |  |  | Aldehil | 8h |  |  |
| 289 | 1.3.4.2 | **Registrar el mensaje guardado en la base de datos:** | 2d | 2024-05-09 | 2024-05-10 |  |  |  | 7d |  |  | Aldehil | 48h |  |  |
| 290 | 1.3.4.2.1 | Configurar el controlador en el API para insertar el mensaje en la BD. | 1d | 2024-05-09 | 2024-05-09 | 283 |  |  | 9d |  |  | Aldehil | 8h |  |  |
| 291 | 1.3.4.2.2 | Configurar la conexión al endpoint, en la aplicación. | 1d | 2024-05-09 | 2024-05-09 | 283 |  |  | 9d |  |  | Aldehil | 8h |  |  |
| 292 | 1.3.4.2.3 | Escribir la lógica para insertar el mensaje escrito por el supervisor en la base de datos al presionar el botón de enviar a través del endpoint configurado en la actividad anterior. | 2d | 2024-05-09 | 2024-05-10 | 283 |  |  | 7d | 0d |  | Aldehil | 16h |  |  |
| 293 | 1.3.4.3 | **Mostrar un mensaje de confirmación al finalizar este proceso:** | 1d | 2024-05-09 | 2024-05-09 |  |  |  | 9d |  |  | Aldehil | 24h |  |  |
| 294 | 1.3.4.3.1 | Diseñar un mensaje de confirmación que se muestre al supervisor una vez que el mensaje haya sido correctamente guardado en la base de datos. | 1d | 2024-05-09 | 2024-05-09 | 283 |  |  | 9d |  |  | Aldehil | 8h |  |  |
| 295 | 1.3.4.3.2 | Implementar la lógica para mostrar este mensaje de confirmación en la interfaz de usuario. | 1d | 2024-05-09 | 2024-05-09 | 283 |  |  | 9d |  |  | Aldehil | 8h |  |  |
| 296 | 1.3.5 | **En la pantalla principal se visualizará el nombre del cliente y el tiempo de espera de manera cronológica, con las llamadas que tienen más tiempo de espera ubicadas en la parte superior de la lista.** | 16d | 2024-04-29 A | 2024-05-15 |  | 19% | 12.97d | 4d |  |  | Noh Ah | 496h | 94.89h | SR5 |
| 297 | 1.3.5.1 | **Visualizar el nombre del cliente y el tiempo de espera de cada llamada en espera en la pantalla principal.** | 12d | 2024-04-29 A | 2024-05-10 |  | 28% | 8.65d | 8d |  |  | Noh Ah | 248h | 70.67h |  |
| 298 | 1.3.5.1.1 | Extraer datos de llamadas en espera desde Connect utilizando Lambda. | 5d | 2024-04-29 A | 2024-05-03 A |  | 100% |  |  |  | start no earlier than 2024-04-29 | Noh Ah | 40h | 40h |  |
| 299 | 1.3.5.1.2 | Procesar los datos extrídos y prepararlos para su visualización. | 10d | 2024-05-01 A | 2024-05-10 |  | 3% | 9.7d | 8d |  | finish no earlier than 2024-05-03 | Noh Ah | 80h | 2.4h |  |
| 300 | 1.3.5.1.3 | Diseñar la interfaz de usuario en la pantalla principal para mostrar el nombre del cliente y el tiempo de espera de cada llamada. | 1d | 2024-05-04 | 2024-05-04 |  |  |  | 14d |  | start no earlier than 2024-05-04 | Noh Ah | 8h |  |  |
| 301 | 1.3.5.1.4 | Integrar los datos procesados con la interfaz de usuario. | 3d | 2024-05-06 | 2024-05-08 |  |  |  | 6d | 0d | finish no earlier than 2024-05-08 | Noh Ah | 24h |  |  |
| 302 | 1.3.5.2 | **Mostrar las llamadas en espera en orden cronológico.** | 6d | 2024-05-09 | 2024-05-15 |  |  |  | 4d |  |  | Noh Ah | 120h |  |  |
| 303 | 1.3.5.2.1 | Utilizar Lambda para desarrollar la lógica de ordenamiento de las llamadas en espera basada en el tiempo de espera. | 4d | 2024-05-09 | 2024-05-13 | 301 |  |  | 6d |  | finish no earlier than 2024-05-13 | Noh Ah | 32h |  |  |
| 304 | 1.3.5.2.2 | Integrar la lógica de ordenamiento desarrollda con la interfaz de usuario. | 3d | 2024-05-12 | 2024-05-14 |  |  |  | 5d |  | finish no earlier than 2024-05-14 | Noh Ah | 24h |  |  |
| 305 | 1.3.5.2.3 | Realizar pruebas para asegurar de que las llamadas en espara se ordenan correctamente en la pantalla principal. | 2d | 2024-05-14 | 2024-05-15 |  |  |  | 4d |  | finish no earlier than 2024-05-15 | Noh Ah | 16h |  |  |

| ID | WBS | Task | Type | Duration | Start | Finish | Complete | Remaining | Total slack | Constraint | Resources | Work | Actual work | Text1 |
| --- | --- | --- | --- | --- | --- | --- | --- | --- | --- | --- | --- | --- | --- | --- |
| 306 | 1.3.6 | **La pantalla principal contara con un menú lateral en el que se visualicen las pantallas de navegación. En la pantalla principal se muestran los agentes del grupo, cada uno con un indicador acerca de su estado (disponible, en llamada, descanso o ausente).** |  | 17d | 2024-04-26 A | 2024-05-15 | 59% | 6.97d | 4d |  | Ingrid | 456h | 269.04h | SR6 |
| 307 | 1.3.6.1 | **Ver el menú lateral con las opciones de navegación del supervisor. Generar el diseño del menú** |  | 6d | 2024-04-26 A | 2024-05-03 A | 100% |  |  |  | Ingrid | 96h | 96h |  |
| 308 | 1.3.6.1.1 | Crear las referencias a las páginas del menú |  | 3d | 2024-04-26 A | 2024-04-30 A | 100% |  |  | finish no earlier than 2024-04-30 | Ingrid | 24h | 24h |  |
| 309 | 1.3.6.1.2 | Colocar las referencias |  | 2d | 2024-05-01 A | 2024-05-02 A | 100% |  |  | finish no earlier than 2024-05-02 | Ingrid | 16h | 16h |  |
| 310 | 1.3.6.1.3 | Realizar el diseño adecuado al resto de la interfaz |  | 1d | 2024-05-03 A | 2024-05-03 A | 100% |  |  | start no earlier than 2024-05-03 | Ingrid | 8h | 8h |  |
| 311 | 1.3.6.2 | **Ver la información de los agentes de manera cuadriculada, con datos que no provienen de la base de datos.** |  | 9d | 2024-05-06 A | 2024-05-15 | 53% | 4.2d | 4d |  | Ingrid | 144h | 76.8h |  |
| 312 | 1.3.6.2.1 | Generar el diseño de la cuadrícula |  | 3d | 2024-05-06 A | 2024-05-08 A | 100% |  |  | finish no earlier than 2024-05-08 | Ingrid | 24h | 24h |  |
| 313 | 1.3.6.2.2 | Generar las rutas para acceder a la base de datos |  | 1d | 2024-05-09 | 2024-05-09 |  |  | 9d | start no earlier than 2024-05-09 | Ingrid | 8h |  |  |
| 314 | 1.3.6.2.3 | Generar las tablas en la base de datos |  | 2d | 2024-05-09 A | 2024-05-11 | 70% | 0.6d | 8d | finish no earlier than 2024-05-11 | Ingrid | 16h | 11.2h |  |
| 315 | 1.3.6.2.4 | Colocar datos de prueba para probar la funcionalidad |  | 2d | 2024-05-13 | 2024-05-14 |  |  | 5d | finish no earlier than 2024-05-14 | Ingrid | 16h |  |  |
| 316 | 1.3.6.2.5 | Asignar los colores adecuados para mostrar el funcionamiento de estas |  | 1d | 2024-05-15 A | 2024-05-15 | 40% | 0.6d | 4d | start no earlier than 2024-05-15 | Ingrid | 8h | 3.2h |  |
| 317 | 1.3.6.3 | **La información que se muestra de los agentes proviene de la base de datos.** |  | 5d | 2024-05-04 A | 2024-05-08 | 20% | 4d | 10d |  | Ingrid | 80h | 16h |  |
| 318 | 1.3.6.3.1 | Conectar la base de datos con el backend |  | 1d | 2024-05-04 A | 2024-05-04 A | 100% |  |  | start no earlier than 2024-05-04 | Ingrid | 8h | 8h |  |
| 319 | 1.3.6.3.2 | Rellenar la base de datos con información para generar pruebas de la funcionalidad |  | 2d | 2024-05-05 | 2024-05-06 |  |  | 12d | finish no earlier than 2024-05-06 | Ingrid | 16h |  |  |
| 320 | 1.3.6.3.3 | Colocar las referencias correspondientes a las rutas para la información de cada agente |  | 2d | 2024-05-07 | 2024-05-08 |  |  | 10d | start no earlier than 2024-05-07 | Ingrid | 16h |  |  |
| 321 | 1.3.7 | **En la pantalla de KPIs general se mostrara la resolución al primer contactoc(porcentaje), abandono de llamadas (porcentaje), nivel de servicio(porcentaje), tiempo promedio de llamada(métrica), velocidad media de respuesta(métrica), ocupación de centro de** |  | 5d | 2024-05-07 A | 2024-05-11 | 16% | 4.19d |  |  | Ingrid | 200h | 26.88h | SR7 |
| 322 | 1.3.7.1 | **Se muestra con texto los diferentes apartados con el KPI que deberían de mostrar.** |  | 3d | 2024-05-07 A | 2024-05-09 | 42% | 1.74d | 9d |  | Ingrid | 64h | 26.88h |  |
| 323 | 1.3.7.1.1 | Generar el acomodo responsivo de los apartados de los KPIs |  | 2d | 2024-05-07 A | 2024-05-08 | 70% | 0.6d | 10d | finish no earlier than 2024-05-08 | Ingrid | 16h | 11.2h |  |
| 324 | 1.3.7.1.2 | Generar los contextos y clases para colocar los objetos de los KPIs |  | 2d | 2024-05-08 | 2024-05-09 |  |  | 9d | start no earlier than 2024-05-08 | Ingrid | 16h |  |  |
| 325 | 1.3.7.1.3 | Colocar en texto cada uno de los KPIs en su espacio correspondiente | manual | 1d | 2024-05-09 A | 2024-05-09 | 70% | 0.3d |  |  | Ingrid | 8h | 5.6h |  |
| 326 | 1.3.7.2 | **Las métricas y porcentajes mostrados son datos prueba** |  | 2d | 2024-05-09 | 2024-05-11 |  |  | 1d |  | Ingrid | 64h |  |  |
| 327 | 1.3.7.2.1 | Crear las tablas necesarias para la información de los KPIs | manual | 1d | 2024-05-10 | 2024-05-10 |  |  |  |  | Ingrid | 8h |  |  |
| 328 | 1.3.7.2.2 | Generar las rutas y referencias necesarias para obtener la información de la base de dato |  | 1d | 2024-05-09 | 2024-05-09 |  |  | 9d | start no earlier than 2024-05-09 | Ingrid | 8h |  |  |
| 329 | 1.3.7.2.3 | Colocar datos prueba en cada KPI para mostrar la funcionalidad de los colores |  | 2d | 2024-05-09 | 2024-05-11 |  |  | 8d | finish no earlier than 2024-05-11 | Ingrid | 16h |  |  |
| 330 | 1.3.7.2.4 | Generar la conexión con Amazon Connect |  | 2d | 2024-05-09 | 2024-05-10 |  |  | 8d | finish no earlier than 2024-05-10 | Ingrid | 16h |  |  |

| ID | WBS | Task | Type | Duration | Start | Finish | Predecessors | Complete | Remaining | Total slack | Constraint | Resources | Work | Actual work | Text1 |
| --- | --- | --- | --- | --- | --- | --- | --- | --- | --- | --- | --- | --- | --- | --- | --- |
| 331 | 1.3.7.3 | **Las métricas y porcentajes visualizados provienen de la base de datos y de Amazon Connect, según corresponda.** |  | 2d | 2024-05-08 | 2024-05-09 |  |  |  | 0d |  | Ingrid | 32h |  |  |
| 332 | 1.3.7.3.1 | Llenar la base de datos con los datos necesarios | manual | 1d | 2024-05-08 | 2024-05-08 |  |  |  |  |  | Ingrid | 8h |  |  |
| 333 | 1.3.7.3.2 | Colocar las referencias correspondientes para cada KPI respecto a la ruta para obtener la información correspondiente |  | 1d | 2024-05-09 | 2024-05-09 |  |  |  | 9d | start no earlier than 2024-05-09 | Ingrid | 8h |  |  |
| 334 | 1.3.8 | **Al seleccionar uno de los KPI en la pantalla se podrán visualizar datos históricos por medio de gráficas para elegir el tiempo deseado, siendo 60 días el máximo atrás que se puede elegir.** |  | 10d | 2024-05-01 A | 2024-05-11 |  | 5% | 9.47d | 8d |  | Ingrid | 384h | 22.45h | SR8 |
| 335 | 1.3.8.1 | **Visualizar el filtro de búsqueda, con su filtro por defecto de 15 minutos y poder elegir una fecha que vaya máximo 60 días atrás.** |  | 8d | 2024-05-01 A | 2024-05-08 |  | 17% | 6.67d | 10d |  | Ingrid | 112h | 18.67h |  |
| 336 | 1.3.8.1.1 | Colocar un botón de Ver más | manual | 1d | 2024-05-01 A | 2024-05-01 A |  | 100% |  |  |  | Ingrid | 8h | 8h |  |
| 337 | 1.3.8.1.2 | Colocar el filtro de selección de búsqueda |  | 1d | 2024-05-02 | 2024-05-02 |  |  |  | 16d | start no earlier than 2024-05-02 | Ingrid | 8h |  |  |
| 338 | 1.3.8.1.3 | Generar la vista con la gráfica, en lugar de la métrica anteriormente visualizada |  | 1d | 2024-05-03 | 2024-05-03 |  |  |  | 15d | start no earlier than 2024-05-03 | Ingrid | 8h |  |  |
| 339 | 1.3.8.1.4 | Colocar gráficas con datos prueba para verificar la visualización |  | 1d | 2024-05-06 | 2024-05-06 |  |  |  | 12d | start no earlier than 2024-05-06 | Ingrid | 8h |  |  |
| 340 | 1.3.8.1.5 | Generar los queries necesarios para realizar la busqueda |  | 2d | 2024-05-07 | 2024-05-08 |  |  |  | 10d | finish no earlier than 2024-05-08 | Ingrid | 16h |  |  |
| 341 | 1.3.8.2 | **Se visualizan las gráficas correspondientes al KPI elegido, con su filtro por defecto.** |  | 8d | 2024-05-03 | 2024-05-11 |  |  |  | 0d |  | Ingrid | 112h |  |  |
| 342 | 1.3.8.2.1 | Se colocan las rutas adecuadas para poder hacer los queries necesarios | manual | 2d | 2024-05-03 | 2024-05-04 |  |  |  |  |  | Ingrid | 16h |  |  |
| 343 | 1.3.8.2.2 | Se ingresan los datos necesarias para poder realizar las pruebas dentro de la base de datos |  | 2d | 2024-05-07 | 2024-05-08 |  |  |  | 10d | finish no earlier than 2024-05-08 | Ingrid | 16h |  |  |
| 344 | 1.3.8.2.3 | Se hace uso únicamente el llamado de información de los últimos 15 minutos |  | 3d | 2024-05-08 | 2024-05-11 |  |  |  | 8d | finish no earlier than 2024-05-11 | Ingrid | 24h |  |  |
| 345 | 1.3.8.3 | **La información mostrada en las gráficas corresponde al filtro elegido de búsqueda.** |  | 5d | 2024-05-06 | 2024-05-10 |  |  |  | 0d |  | Ingrid | 88h |  |  |
| 346 | 1.3.8.3.1 | Se realiza la prueba de selección del tiempo con la información correspondiente. | manual | 5d | 2024-05-06 | 2024-05-10 |  |  |  |  |  | Ingrid | 40h |  |  |
| 347 | 1.3.8.3.2 | Se implementan los colores y diseño establecido. | manual | 1d | 2024-05-07 | 2024-05-07 |  |  |  |  |  | Ingrid | 8h |  |  |
| 348 | 1.3.9 | **El supervisor puede acceder al perfil de cada agente desde un botón en el menú lateral. Podrá ver los datos generales del agente (nombre, imagen, horario laboral) y los KPIs de su atención de llamadas en un día específico (llamadas respondidas, abandonada** |  | 12d | 2024-04-25 A | 2024-05-08 |  | 94% | 0.72d | 10d |  | Noh Ah | 424h | 331.84h | SR9 |
| 349 | 1.3.9.1 | **Visualizar lo datos generales de los agentes.** |  | 9d | 2024-04-30 A | 2024-05-08 A |  | 100% |  |  |  | Noh Ah | 192h | 192h |  |
| 350 | 1.3.9.1.1 | Configurar el acceso a los datos de los agentes desde Amazon Connect. |  | 4d | 2024-04-30 A | 2024-05-03 A |  | 100% |  |  | start no earlier than 2024-04-30 | Noh Ah | 32h | 32h |  |
| 351 | 1.3.9.1.2 | Extraer los datos de los agentes desde Connect utilizando Lambda. |  | 3d | 2024-05-04 A | 2024-05-06 A | 350 | 100% |  |  |  | Noh Ah | 24h | 24h |  |
| 352 | 1.3.9.1.3 | Procesar los datos para su visualización. |  | 3d | 2024-05-01 A | 2024-05-03 A |  | 100% |  |  | finish no earlier than 2024-05-03 | Noh Ah | 24h | 24h |  |
| 353 | 1.3.9.1.4 | Diseñar la interfaz de usuario para mostrar los datos generales de los agentes. |  | 2d | 2024-05-05 A | 2024-05-06 A | 352 | 100% |  |  | finish no earlier than 2024-05-06 | Noh Ah | 16h | 16h |  |
| 354 | 1.3.9.1.5 | Integrar los datos procesados con la interfaz de usuario para visualizar los datos generales de los agentes. |  | 3d | 2024-05-06 A | 2024-05-08 A |  | 100% |  |  | finish no earlier than 2024-05-08 | Noh Ah | 24h | 24h |  |

| ID | WBS | Task | Duration | Start | Finish | Predecessors | Complete | Remaining | Total slack | Free slack | Resources | Work | Actual work | Text1 |
| --- | --- | --- | --- | --- | --- | --- | --- | --- | --- | --- | --- | --- | --- | --- |
| 355 | 1.3.9.2 | **Consultar los KPIs de atención de llamadas.** | 10d | 2024-04-25 A | 2024-05-06 |  | 85% | 1.5d | 12d |  | Noh Ah | 160h | 136h |  |
| 356 | 1.3.9.2.1 | Configurar la extracción de datos de los KPIs desde Connect. | 5d | 2024-04-25 A | 2024-05-01 |  | 80% | 1d | 2.7d | 0d | Noh Ah | 40h | 32h |  |
| 357 | 1.3.9.2.2 | Desarrollar la lógica para consultar y calcular los KPIs (llamadas respondidas, abandonadas, duración promedio). | 3d | 2024-05-02 A | 2024-05-04 | 356 | 90% | 0.3d | 1.8d | 0d | Noh Ah | 24h | 21.6h |  |
| 358 | 1.3.9.2.3 | Integrar la visualización de los KPIs en la interfaz de usuario. | 2d | 2024-05-05 A | 2024-05-06 | 357 | 90% | 0.2d | 12d |  | Noh Ah | 16h | 14.4h |  |
| 359 | 1.3.10 | **El superviso puede acceder a un apartado en donde podrá contetar unas preguntas las cuales podrán evaluar el desempeño del agente. Y en cas de necesitar ser más objetivo durante su comentario, complementarlo con un comentario más detallado.** | 14.5d | 2024-04-25 A | 2024-05-12 |  | 63% | 5.4d | 7.5d |  | Gerardo | 276h | 135.2h | SR10 |
| 360 | 1.3.10.1 | **Redactar las preguntas necesarias que se pueda argumentar de manera clara y efectiva para describir el desempaño del agente.** | 11d | 2024-04-25 A | 2024-05-07 A |  | 100% |  |  |  | Gerardo | 104h | 104h |  |
| 361 | 1.3.10.1.1 | Redactar preguntas que ayuden a puntuar y a describir el trabajo del agente. | 1d | 2024-04-25 A | 2024-04-25 A |  | 100% |  |  |  | Gerardo | 8h | 8h |  |
| 362 | 1.3.10.1.2 | Agregar un apartado donde se puedan puntuar del 1 al 10 el desempeño del agente | 1d | 2024-05-07 A | 2024-05-07 A | 353 | 100% |  |  |  | Gerardo | 8h | 8h |  |
| 363 | 1.3.10.2 | **Diseñar el apartado de las preguntas de manera clara.** | 1d | 2024-05-08 A | 2024-05-08 A |  | 100% |  |  |  | Gerardo | 16h | 16h |  |
| 364 | 1.3.10.2.1 | Diseñar una interfaz donde se pueda ver la división clara de cada una de las preguntas. | 1d | 2024-05-08 A | 2024-05-08 A | 362 | 100% |  |  |  | Gerardo | 8h | 8h |  |
| 365 | 1.3.10.3 | **Agregar una sección de comentarios para cada una de las preguntas.** | 0.5d | 2024-05-09 A | 2024-05-09 |  | 90% | 0.05d | 7.5d |  | Gerardo | 8h | 7.2h |  |
| 366 | 1.3.10.3.1 | Establecer de manera clara que apartado de comentarios corresponde a cada pregunta | 0.5d | 2024-05-09 A | 2024-05-09 | 364 | 90% | 0.05d | 7.5d | 0d | Gerardo | 4h | 3.6h |  |
| 367 | 1.3.10.4 | **Guardar los datos de la encuesta al agente en la base de datos.** | 1d | 2024-05-09 | 2024-05-10 |  |  |  | 7.5d |  | Gerardo | 16h |  |  |
| 368 | 1.3.10.4.1 | Crear un post un método post donde se puedan subir los resultados y comentarios a la base de datos hacia su respectivo agente | 1d | 2024-05-09 | 2024-05-10 | 366 |  |  | 7.5d | 0d | Gerardo | 8h |  |  |
| 369 | 1.3.10.5 | **Enviar los datos de la encuesta al agente.** | 1d | 2024-05-10 | 2024-05-12 |  |  |  | 7.5d |  | Gerardo | 16h |  |  |
| 370 | 1.3.10.5.1 | Crear un método get donde se pueda obtener los resultados y comentarios de los respectivos agentes | 1d | 2024-05-10 | 2024-05-12 | 368 |  |  | 7.5d |  | Gerardo | 8h |  |  |
